# Progetto 2 PM

Schedule from MS Project, 2021-01-12 to 2021-08-23.

## Calendars

- Standard: Mon-Fri 09:00-13:00, 14:00-18:00; Sat-Sun off.

## Resources

| Resource |
| --- |
| gabriele |
| gabriele,giorgio |
| prog web |
| dev |
| dev1 |
| dev2 |
| dev 1 |
| dev 2 |
| dev3 |
| prog web , ux |
| prog web, ux |
| dev1, dev2 |
| ICT,CS,NS*2 |
| ICT,CS |
| ICT |
| CS |
| Collaboratori ICT,CS |
| Collaboratori ICT,CS,NS*2 |
| RISORSE UMANE |
| NS*2 |
| DB |
| TM |
| de1 |
| dev4 |
| dev5 |
| dev6 |
| ux |
| devfront1 |
| devfront2 |
| devfront3 |
| devfont2 |

## Schedule

| ID | WBS | Task | Type | Duration | Start | Finish | Predecessors | Total slack | Free slack | Constraint | Resources | Work |
| --- | --- | --- | --- | --- | --- | --- | --- | --- | --- | --- | --- | --- |
| 1 | 1 | **OR1:GESTIONE E CONTROLLO** |  | 160d? | 2021-01-12 | 2021-08-23 |  |  |  |  |  |  |
| 2 | 1.1 | Business Case e Piano di Progetto |  | 3d | 2021-01-12 | 2021-01-14 |  | 1d | 0d |  |  |  |
| 3 | 1.2 | Documento di Gestione dei Rischi |  | 2d | 2021-01-15 | 2021-01-18 | 2 | 1d | 0d |  |  |  |
| 4 | 1.3 | Documento di Gestione della Qualità |  | 3d | 2021-01-19 | 2021-01-21 | 3 | 1d | 0d |  |  |  |
| 5 | 1.4 | Documento di Gestione della Comunicazione |  | 5d | 2021-01-22 | 2021-01-28 | 4 | 1d | 0d |  |  |  |
| 6 | 1.5 | Documento di Gestione del Timing, del Budget e delle Risorse |  | 2d | 2021-01-29 | 2021-02-01 | 5 | 1d | 0d |  |  |  |
| 7 | 1.6 | Studio di mercato |  | 2d | 2021-02-02 | 2021-02-03 | 6 | 1d | 0d |  |  |  |
| 8 | 1.7 | Documento di Controllo e Monitoraggio sugli Obiettivi del Progetto |  | 133d | 2021-02-04 | 2021-08-09 | 7 | 1d | 0d | start no earlier than 2021-01-11 |  |  |
| 9 | 1.8 | **Documento di Chiusura e Lessons Learned** |  | 9d | 2021-08-10 | 2021-08-20 | 8 | 1d | 0d |  |  |  |
| 10 | 1.8.1 | Documento di Chiusura |  | 4d | 2021-08-10 | 2021-08-13 |  | 1d | 0d |  |  |  |
| 11 | 1.8.2 | Lessons Learned |  | 5d | 2021-08-16 | 2021-08-20 | 10 | 1d |  |  |  |  |
| 12 | 2 | Milestone 1 | milestone | 0d | 2021-02-03 | 2021-02-03 | 7 | 10d | 0d |  |  |  |
| 13 | 3 | **OR2: Organizzazione della rete locale** |  | 45d | 2021-02-04 | 2021-04-07 | 12 | 10d | 0d |  |  | 520h |
| 14 | 3.1 | **Report pianificazione dell’infrastruttura di rete** |  | 16d | 2021-02-04 | 2021-02-25 |  | 10d | 0d |  |  | 128h |
| 15 | 3.1.1 | Analisi di mercato sulle soluzioni topologiche moderne |  | 2d | 2021-02-04 | 2021-02-05 |  | 10d | 0d |  | ICT,CS,NS*2 | 16h |
| 16 | 3.1.2 | Individuazione asset informatici e rischi correlati |  | 3d | 2021-02-08 | 2021-02-10 | 15 | 10d | 0d |  | ICT,CS,NS*2 | 24h |
| 17 | 3.1.3 | Pianificazione su software di simulazione di topologie di rete |  | 7d | 2021-02-11 | 2021-02-19 | 16 | 10d | 0d |  | ICT,CS,NS*2 | 56h |
| 18 | 3.1.4 | Stesura di report finale sulla pianificazione della rete |  | 4d | 2021-02-22 | 2021-02-25 | 17 | 10d |  |  | ICT | 32h |
| 19 | 3.2 | Milestone 2 | milestone | 0d | 2021-02-25 | 2021-02-25 | 14 | 10d | 0d |  |  |  |
| 20 | 3.3 | **Realizzazione dell’infrastruttura di rete** |  | 20d | 2021-02-26 | 2021-03-25 | 19 | 10d | 6d |  |  | 160h |
| 21 | 3.3.1 | Acquisto degli apparati necessari e realizzazione della rete |  | 20d | 2021-02-26 | 2021-03-25 |  | 10d | 0d |  | CS | 160h |
| 22 | 3.4 | **Rafforzamento della sicurezza informatica** |  | 26d | 2021-02-26 | 2021-04-02 | 14 | 10d | 0d |  |  | 128h |
| 23 | 3.4.1 | Valutazione preventivi con aziende specializzate in penetration testing |  | 10d | 2021-02-26 | 2021-03-11 | 21SS | 20d | 10d | start no earlier than 2021-01-13 | ICT,CS | 80h |
| 24 | 3.4.2 | Svolgimento penetration testing da parte di due aziende scelte |  | 2d | 2021-03-26 | 2021-03-29 | 21, 23 | 10d | 0d |  | Collaboratori ICT,CS,NS*2 | 16h |
| 25 | 3.4.3 | Simulazione Disaster Recovery |  | 2d | 2021-03-30 | 2021-03-31 | 24 | 10d | 0d |  | ICT,CS,NS*2 | 16h |
| 26 | 3.4.4 | Stesura delle linee guida per un piano di Disaster Recovery |  | 2d | 2021-04-01 | 2021-04-02 | 25 | 10d | 0d |  | ICT | 16h |

| ID | WBS | Task | Type | Duration | Start | Finish | Predecessors | Total slack | Free slack | Resources | Work |
| --- | --- | --- | --- | --- | --- | --- | --- | --- | --- | --- | --- |
| 27 | 3.5 | **Corso anti social-engineering per i dipendenti** |  | 23d | 2021-02-26 | 2021-03-30 | 14 | 13d | 3d |  | 80h |
| 28 | 3.5.1 | Valutazione preventivi con aziende specializzate nell’attività di training per il contrasto al social engineering |  | 7d | 2021-02-26 | 2021-03-08 | 21SS | 26d | 13d | ICT,CS | 56h |
| 29 | 3.5.2 | Contrattazione ed erogazione del corso anti social-engineering da parte dell'azienda scelta |  | 3d | 2021-03-26 | 2021-03-30 | 28, 21 | 13d |  | RISORSE UMANE | 24h |
| 30 | 3.6 | **Messa in opera dell’infrastruttura di rete** |  | 3d | 2021-04-05 | 2021-04-07 | 20, 22, 27 | 10d |  |  | 24h |
| 31 | 3.6.1 | Messa in opera dell’infrastruttura di rete |  | 3d | 2021-04-05 | 2021-04-07 | 26 | 10d |  | NS*2 | 24h |
| 32 | 4 | SAL 1 | milestone | 0d | 2021-04-07 | 2021-04-07 | 13 | 10d | 0d |  |  |
| 33 | 5 | **OR3: Realizzazione Back-end** |  | 55d | 2021-04-08 | 2021-06-23 | 32 | 10d | 0d |  | 1328h |
| 34 | 5.1 | **Accesso al dominio** |  | 3d | 2021-04-08 | 2021-04-12 |  | 10d | 0d |  | 48h |
| 35 | 5.1.1 | Inizializzazione dominio web |  | 2d | 2021-04-08 | 2021-04-09 |  | 10d | 0d | TM; DB | 32h |
| 36 | 5.1.2 | Avvio server sul dominio |  | 1d | 2021-04-12 | 2021-04-12 | 35 | 10d |  | TM; DB | 16h |
| 37 | 5.2 | **Documento di progettazione del database** |  | 20d | 2021-04-13 | 2021-05-10 | 34 | 10d | 0d |  | 320h |
| 38 | 5.2.1 | Realizzazione diagramma E/R |  | 7d | 2021-04-13 | 2021-04-21 |  | 10d | 0d | DB; TM | 112h |
| 39 | 5.2.2 | Progettazione logica del database |  | 3d | 2021-04-22 | 2021-04-26 | 38 | 10d | 0d | DB; TM | 48h |
| 40 | 5.2.3 | Progettazione fisica del database |  | 3d | 2021-04-27 | 2021-04-29 | 39 | 10d | 0d | TM; DB | 48h |
| 41 | 5.2.4 | Progettazione Controller del Database |  | 7d | 2021-04-30 | 2021-05-10 | 40 | 10d |  | TM; dev3 | 112h |
| 42 | 5.3 | Milestone 3 | milestone | 0d | 2021-05-10 | 2021-05-10 | 37 | 10d | 0d |  |  |
| 43 | 5.4 | **Database** |  | 10d | 2021-05-11 | 2021-05-24 | 42 | 10d | 0d |  | 240h |
| 44 | 5.4.1 | Implementazione del database |  | 10d | 2021-05-11 | 2021-05-24 |  | 10d |  | DB; dev1 | 160h |
| 45 | 5.4.2 | Implementazione Controller del Database |  | 5d | 2021-05-11 | 2021-05-17 |  | 15d |  | TM; dev2 | 80h |
| 46 | 5.5 | **Accesso al CMS** |  | 2d | 2021-05-25 | 2021-05-26 | 43 | 10d | 0d |  | 48h |
| 47 | 5.5.1 | Installazione del CMS |  | 2d | 2021-05-25 | 2021-05-26 |  | 10d |  | dev1; dev2; DB | 48h |
| 48 | 5.6 | **Autenticazione** |  | 20d | 2021-05-27 | 2021-06-23 | 46 | 10d |  |  | 224h |
| 49 | 5.6.1 | Progettazione del plugin di autenticazione |  | 12d | 2021-05-27 | 2021-06-11 |  | 10d | 0d | dev1 | 96h |
| 50 | 5.6.2 | Interfaccia di autenticazione |  | 8d | 2021-06-14 | 2021-06-23 | 49 | 10d |  | dev1; dev4 | 128h |

| ID | WBS | Task | Type | Duration | Start | Finish | Predecessors | Total slack | Free slack | Resources | Work |
| --- | --- | --- | --- | --- | --- | --- | --- | --- | --- | --- | --- |
| 51 | 5.7 | **Pagamento** |  | 20d | 2021-05-27 | 2021-06-23 | 46 | 10d |  |  | 224h |
| 52 | 5.7.1 | Progettazione del plugin di pagamento |  | 12d | 2021-05-27 | 2021-06-11 |  | 10d | 0d | dev2 | 96h |
| 53 | 5.7.2 | Interfaccia di pagamento |  | 8d | 2021-06-14 | 2021-06-23 | 52 | 10d |  | dev2; dev5 | 128h |
| 54 | 5.8 | **Gestione Ordini** |  | 20d | 2021-05-27 | 2021-06-23 | 46 | 10d |  |  | 224h |
| 55 | 5.8.1 | Progettazione plugin di gestione ordini |  | 12d | 2021-05-27 | 2021-06-11 |  | 10d | 0d | dev3 | 96h |
| 56 | 5.8.2 | Implementazione plugin di gestione ordini |  | 8d | 2021-06-14 | 2021-06-23 | 55 | 10d |  | dev3; dev6 | 128h |
| 57 | 6 | Milestone 4 | milestone | 0d | 2021-06-23 | 2021-06-23 | 33 | 10d | 0d |  |  |
| 58 | 7 | **OR4: Realizzazione Front-end** |  | 33d | 2021-06-24 | 2021-08-09 | 57 | 10d |  |  | 728h |
| 59 | 7.1 | **Mappa di navigazione del sito** |  | 1d | 2021-06-24 | 2021-06-24 |  | 10d | 0d |  | 8h |
| 60 | 7.1.1 | Realizzazione mappa di navigazione del sito |  | 1d | 2021-06-24 | 2021-06-24 |  | 10d |  | TM | 8h |
| 61 | 7.2 | **Template base** |  | 5d | 2021-06-25 | 2021-07-01 | 59 | 10d | 0d |  | 112h |
| 62 | 7.2.1 | Scelta colori e font del sito |  | 2d | 2021-06-25 | 2021-06-28 |  | 10d | 0d | prog web; ux | 32h |
| 63 | 4.2.2.1 | Progettazione Header |  | 2d | 2021-06-29 | 2021-06-30 | 62 | 10d | 0d | prog web; ux | 32h |
| 64 | 4.2.2.2 | Realizzazione Header |  | 1d | 2021-07-01 | 2021-07-01 | 63 | 10d |  | devfront1 | 8h |
| 65 | 4.2.3.1 | Progettazione Footer |  | 2d | 2021-06-29 | 2021-06-30 | 62 | 10d | 0d | prog web; ux | 32h |
| 66 | 4.2.3.2 | Realizzazione Footer |  | 1d | 2021-07-01 | 2021-07-01 | 65 | 10d |  | devfront2 | 8h |
| 67 | 7.3 | **Area personale e autenticazione** |  | 5d | 2021-07-02 | 2021-07-08 | 61 | 10d | 0d |  | 120h |
| 68 | 4.3.1.1 | Progettazione Pagina Profilo |  | 2d | 2021-07-02 | 2021-07-05 |  | 10d | 0d | prog web; ux | 32h |
| 69 | 4.3.1.2 | Realizzazione Pagina Profilo |  | 1d | 2021-07-06 | 2021-07-06 | 68 | 12d |  | devfront2 | 8h |
| 70 | 4.3.2.1 | Progettazione Pagina Login |  | 2d | 2021-07-02 | 2021-07-05 |  | 10d | 0d | prog web; ux | 32h |
| 71 | 4.3.2.2 | Realizzazione Pagina Login |  | 1d | 2021-07-06 | 2021-07-06 | 70 | 12d |  | devfront1 | 8h |
| 72 | 4.3.3.1 | Progettazione Registrazione |  | 2d | 2021-07-06 | 2021-07-07 | 68, 70 | 10d | 0d | prog web; ux | 32h |
| 73 | 4.3.3.2 | Realizzazione Registrazione |  | 1d | 2021-07-08 | 2021-07-08 | 72 | 10d |  | devfront1 | 8h |
| 74 | 7.4 | **Area E-commerce** |  | 8d | 2021-07-09 | 2021-07-20 | 67 | 10d | 0d |  | 152h |
| 75 | 4.4.1.1 | Progettazione area recensioni |  | 3d | 2021-07-09 | 2021-07-13 |  | 10d | 0d | prog web; ux | 48h |
| 76 | 4.4.1.2 | Realizzazione area recensioni |  | 2d | 2021-07-14 | 2021-07-15 | 75 | 13d |  | devfront1 | 16h |
| 77 | 4.4.2.1 | Progettazione Carrello |  | 2d | 2021-07-14 | 2021-07-15 | 75 | 12d | 0d | prog web | 16h |
| 78 | 4.4.2.2 | Realizzazione Carrello |  | 1d | 2021-07-16 | 2021-07-16 | 77 | 12d |  | devfront2 | 8h |
| 79 | 4.4.3.1 | Progettazione area acquisti |  | 3d | 2021-07-14 | 2021-07-16 | 75 | 10d | 0d | prog web; ux | 48h |
| 80 | 4.4.3.2 | Realizzazione area acquisti |  | 2d | 2021-07-19 | 2021-07-20 | 79 | 10d |  | devfront3 | 16h |
| 81 | 7.5 | Milestone 5 | milestone | 0d | 2021-07-20 | 2021-07-20 | 74 | 10d | 0d |  |  |

| ID | WBS | Task | Type | Duration | Start | Finish | Predecessors | Total slack | Free slack | Resources | Work |
| --- | --- | --- | --- | --- | --- | --- | --- | --- | --- | --- | --- |
| 82 | 7.6 | **Area Prodotto** |  | 3d | 2021-07-21 | 2021-07-23 | 81 | 10d | 0d |  | 64h |
| 83 | 4.5.1.1 | Progettazione pagina prodotto |  | 2d | 2021-07-21 | 2021-07-22 |  | 10d | 0d | prog web; ux | 32h |
| 84 | 4.5.1.2 | Realizzazione pagina prodotto |  | 1d | 2021-07-23 | 2021-07-23 | 83 | 10d |  | devfront1 | 8h |
| 85 | 4.5.2.1 | Progettazione Modifica Prodotto |  | 1d | 2021-07-21 | 2021-07-21 |  | 11d | 0d | prog web; ux | 16h |
| 86 | 4.5.2.2 | Realizzazione Modifica Prodotto |  | 1d | 2021-07-22 | 2021-07-22 | 85 | 11d |  | devfont2 | 8h |
| 87 | 7.7 | **Area Social** |  | 4d | 2021-07-26 | 2021-07-29 | 82 | 17d |  |  | 104h |
| 88 | 4.6.1.1 | Progettazione Visualizza profilo utente e designer |  | 2d | 2021-07-26 | 2021-07-27 |  | 18d | 0d | prog web; ux | 32h |
| 89 | 4.6.1.2 | Realizzazione Visualizza profilo utente e designer |  | 1d | 2021-07-28 | 2021-07-28 | 88 | 18d |  | devfront3 | 8h |
| 90 | 4.6.2.1 | Progettazione Area Lavora con noi |  | 1d | 2021-07-26 | 2021-07-26 |  | 19d | 0d | prog web | 8h |
| 91 | 4.6.2.2 | Realizzazione Area Lavora con noi |  | 1d | 2021-07-27 | 2021-07-27 | 90 | 19d |  | devfront1 | 8h |
| 92 | 4.6.3.1 | Progettazione Chat |  | 2d | 2021-07-26 | 2021-07-27 |  | 17d | 0d | prog web; ux | 32h |
| 93 | 4.6.3.2 | Realizzazione Chat |  | 2d | 2021-07-28 | 2021-07-29 | 92 | 17d |  | devfront2 | 16h |
| 94 | 7.8 | **Area Moderatore** |  | 4d | 2021-07-26 | 2021-07-29 | 82 | 10d | 0d |  | 32h |
| 95 | 7.8.1 | Progettazione Area Candidati Designer |  | 2d | 2021-07-26 | 2021-07-27 |  | 10d | 0d | prog web | 16h |
| 96 | 7.8.2 | Realizzazione Area Candidati Designer |  | 2d | 2021-07-28 | 2021-07-29 | 95 | 10d |  | devfront3 | 16h |
| 97 | 7.9 | **Area Gestionale** |  | 4d | 2021-07-30 | 2021-08-04 | 94 | 10d | 0d |  | 96h |
| 98 | 7.9.1 | Progettazione Area Ordini |  | 2d | 2021-07-30 | 2021-08-02 |  | 10d | 0d | prog web; ux | 32h |
| 99 | 7.9.2 | Realizzazione Area Ordini |  | 2d | 2021-08-03 | 2021-08-04 | 98 | 10d |  | devfront1 | 16h |
| 100 | 7.9.3 | Progettazione Area Gestione Produzione |  | 2d | 2021-07-30 | 2021-08-02 |  | 10d | 0d | prog web; ux | 32h |
| 101 | 7.9.4 | Realizzazione Area Gestione Produzione |  | 2d | 2021-08-03 | 2021-08-04 | 100 | 10d |  | devfront2 | 16h |
| 102 | 7.10 | **Area Ricerca e Classifica** |  | 3d | 2021-08-05 | 2021-08-09 | 97 | 10d |  |  | 40h |
| 103 | 7.10.1 | Progettazione Area Classifica |  | 1d | 2021-08-05 | 2021-08-05 |  | 10d | 0d | prog web | 8h |
| 104 | 7.10.2 | Realizzazione Area Classifica |  | 2d | 2021-08-06 | 2021-08-09 | 103 | 10d |  | devfront3 | 16h |
| 105 | 7.10.3 | Progettazione Area Ricerca Prodotto |  | 1d | 2021-08-05 | 2021-08-05 |  | 11d | 0d | prog web | 8h |
| 106 | 7.10.4 | Realizzazione Area Ricerca Prodotto |  | 1d | 2021-08-06 | 2021-08-06 | 105 | 11d |  | devfront2 | 8h |
| 107 | 8 | SAL FINE PROGETTO | milestone, manual | 0d | 2021-08-23 | 2021-08-23 | 9 |  |  |  |  |
